# 国际机票任务安排

Schedule from MS Project, 2012-07-30 to 2012-10-01.

## Calendars

- 标准: Mon-Fri 08:00-12:00, 13:00-17:00; Sat-Sun off.

## Resources

| Resource |
| --- |
| 陶勇 |
| 向震 |
| 张明涛 |
| 邓勇 |

## Schedule

| ID | WBS | Task | Duration | Start | Finish | Predecessors | Total slack | Free slack | Constraint | Resources | Work |
| --- | --- | --- | --- | --- | --- | --- | --- | --- | --- | --- | --- |
| 1 | 1 | 国际机票的数据库设计 | 1d | 2012-07-30 | 2012-07-31 |  | 32d | 0d | start no earlier than 2012-07-30 | 陶勇 | 8h |
| 2 | 2 | 国际机票系统架构设计 | 1d | 2012-07-31 | 2012-08-01 | 1 | 32d | 0d |  | 陶勇 | 8h |
| 3 | 3 | **采购商功能模块** | 18d | 2012-08-01 | 2012-08-27 | 2 | 25d |  |  |  | 320h |
| 4 | 3.1 | 首页 | 0.5d | 2012-08-01 | 2012-08-01 |  | 42.5d |  |  | 向震 | 4h |
| 5 | 3.2 | **机票采购** | 4d | 2012-08-01 | 2012-08-07 |  | 32d |  |  |  | 56h |
| 6 | 3.2.1 | PNR导入创建订单 | 2d | 2012-08-01 | 2012-08-03 |  | 40d | 0d |  | 向震 | 16h |
| 7 | 3.2.2 | PNR导入预定详情 | 1d | 2012-08-03 | 2012-08-06 | 6 | 40d |  |  | 向震 | 8h |
| 8 | 3.2.3 | 单程搜索查询 | 1d | 2012-08-01 | 2012-08-02 |  | 32d | 0d |  | 陶勇 | 8h |
| 9 | 3.2.4 | 单程预定提交 | 1d | 2012-08-02 | 2012-08-03 | 8 | 32d | 0d |  | 陶勇 | 8h |
| 10 | 3.2.5 | 单程预定完成详情 | 0.5d | 2012-08-03 | 2012-08-03 | 9 | 32d | 0d |  | 陶勇 | 4h |
| 11 | 3.2.6 | 往返搜索查询 | 0.5d | 2012-08-03 | 2012-08-06 | 10 | 32d | 0d |  | 陶勇 | 4h |
| 12 | 3.2.7 | 往返预订提交 | 0.5d | 2012-08-06 | 2012-08-06 | 11 | 32d | 0d |  | 陶勇 | 4h |
| 13 | 3.2.8 | 往返预订完成详情 | 0.5d | 2012-08-06 | 2012-08-07 | 12 | 32d | 0d |  | 陶勇 | 4h |
| 14 | 3.3 | **机票订单管理** | 11d | 2012-08-07 | 2012-08-22 | 13 | 28d |  |  |  | 204h |
| 15 | 3.3.1 | **出票** | 7d | 2012-08-07 | 2012-08-16 |  | 32d |  |  |  | 56h |
| 16 | 3.3.1.1 | 出票订单管理(列表) | 1d | 2012-08-07 | 2012-08-08 |  | 32d | 0d |  | 邓勇 | 8h |
| 17 | 3.3.1.2 | 待支付订单详情 | 2d | 2012-08-08 | 2012-08-10 | 16 | 32d | 0d |  | 邓勇 | 16h |
| 18 | 3.3.1.3 | 审核中订单详情 | 0.5d | 2012-08-10 | 2012-08-10 | 17 | 32d | 0d | start no earlier than 2012-08-02 | 邓勇 | 4h |
| 19 | 3.3.1.4 | 出票中订单详情 | 0.5d | 2012-08-10 | 2012-08-13 | 18 | 32d | 0d | start no earlier than 2012-08-02 | 邓勇 | 4h |
| 20 | 3.3.1.5 | 审核退回订单详情 | 0.5d | 2012-08-13 | 2012-08-13 | 19 | 32d | 0d | start no earlier than 2012-08-02 | 邓勇 | 4h |
| 21 | 3.3.1.6 | 出票成功订单详情 | 0.5d | 2012-08-13 | 2012-08-14 | 20 | 32d | 0d | start no earlier than 2012-08-02 | 邓勇 | 4h |
| 22 | 3.3.1.7 | 申请改签 | 1d | 2012-08-14 | 2012-08-15 | 21 | 32d | 0d |  | 邓勇 | 8h |
| 23 | 3.3.1.8 | 取消订单详情 | 1d | 2012-08-15 | 2012-08-16 | 22 | 32d |  | start no earlier than 2012-08-02 | 邓勇 | 8h |
| 24 | 3.3.2 | **改签** | 6d | 2012-08-10 | 2012-08-20 |  | 30d |  |  |  | 48h |
| 25 | 3.3.2.1 | 改签订单列表 | 1d | 2012-08-10 | 2012-08-13 |  | 30d | 0d | start no earlier than 2012-08-10 | 向震 | 8h |
| 26 | 3.3.2.2 | 改签审核中订单详情 | 1d | 2012-08-13 | 2012-08-14 | 25 | 30d | 0d |  | 向震 | 8h |
| 27 | 3.3.2.3 | 改签审核退回订单详情 | 1d | 2012-08-14 | 2012-08-15 | 26 | 30d | 0d |  | 向震 | 8h |
| 28 | 3.3.2.4 | 改签审核通过，待支付订单详情 | 1d | 2012-08-15 | 2012-08-16 | 27 | 30d | 0d |  | 向震 | 8h |
| 29 | 3.3.2.5 | 改签中订单详情 | 1d | 2012-08-16 | 2012-08-17 | 28 | 30d | 0d |  | 向震 | 8h |
| 30 | 3.3.2.6 | 已改签订单详情 | 1d | 2012-08-17 | 2012-08-20 | 29 | 30d |  |  | 向震 | 8h |

| ID | WBS | Task | Type | Duration | Start | Finish | Predecessors | Total slack | Free slack | Constraint | Resources | Work |
| --- | --- | --- | --- | --- | --- | --- | --- | --- | --- | --- | --- | --- |
| 31 | 3.3.3 | **退票** |  | 3d | 2012-08-10 | 2012-08-15 |  | 33d |  |  | 张明涛 | 48h |
| 32 | 3.3.3.1 | 退票订单列表 |  | 1d | 2012-08-10 | 2012-08-13 |  | 33d | 0d | start no earlier than 2012-08-10 | 张明涛 | 8h |
| 33 | 3.3.3.2 | 退票审核中订单详情 |  | 1d | 2012-08-13 | 2012-08-14 | 32 | 33d | 0d |  | 张明涛 | 8h |
| 34 | 3.3.3.3 | 退票中订单详情 |  | 0.5d | 2012-08-14 | 2012-08-14 | 33 | 33d | 0d |  | 张明涛 | 4h |
| 35 | 3.3.3.4 | 已退票订单详情 |  | 0.5d | 2012-08-14 | 2012-08-15 | 34 | 33d |  |  | 张明涛 | 4h |
| 36 | 3.3.4 | **废票** |  | 2.5d | 2012-08-16 | 2012-08-20 |  | 29.5d |  |  |  | 20h |
| 37 | 3.3.4.1 | 废票订单列表 |  | 1d | 2012-08-16 | 2012-08-17 |  | 29.5d | 0d | start no earlier than 2012-08-16 | 张明涛 | 8h |
| 38 | 3.3.4.2 | 废票中订单详情 |  | 1d | 2012-08-17 | 2012-08-20 | 37 | 29.5d | 0d |  | 张明涛 | 8h |
| 39 | 3.3.4.3 | 已废票订单详情 |  | 0.5d | 2012-08-20 | 2012-08-20 | 38 | 29.5d |  |  | 张明涛 | 4h |
| 40 | 3.3.5 | **退款** |  | 4d | 2012-08-16 | 2012-08-22 |  | 28d |  |  |  | 32h |
| 41 | 3.3.5.1 | 退款订单列表 |  | 1d | 2012-08-16 | 2012-08-17 |  | 28d | 0d | start no earlier than 2012-08-16 | 陶勇 | 8h |
| 42 | 3.3.5.2 | 申请退款 |  | 1d | 2012-08-17 | 2012-08-20 | 41 | 28d | 0d |  | 陶勇 | 8h |
| 43 | 3.3.5.3 | 退款中订单详情 |  | 1d | 2012-08-20 | 2012-08-21 | 42 | 28d | 0d |  | 陶勇 | 8h |
| 44 | 3.3.5.4 | 退款完成订单详情 |  | 1d | 2012-08-21 | 2012-08-22 | 43 | 28d |  |  | 陶勇 | 8h |
| 45 | 3.4 | **政策查询** |  | 4d | 2012-08-06 | 2012-08-10 |  | 36d |  |  |  | 32h |
| 46 | 3.4.1 | 机票政策查询页面 |  | 1d | 2012-08-06 | 2012-08-07 |  | 36d | 0d | start no earlier than 2012-08-06 | 向震 | 8h |
| 47 | 3.4.2 | 查看政策详情 |  | 1d | 2012-08-07 | 2012-08-08 | 46 | 36d | 0d |  | 向震 | 8h |
| 48 | 3.4.3 | 特价政策查看 |  | 1d | 2012-08-08 | 2012-08-09 | 47 | 36d | 0d |  | 向震 | 8h |
| 49 | 3.4.4 | 普通政策查看 |  | 1d | 2012-08-09 | 2012-08-10 | 48 | 36d |  |  | 向震 | 8h |
| 50 | 3.5 | 机票统计 |  | 2d | 2012-08-23 | 2012-08-27 |  | 25d |  | start no earlier than 2012-08-23 | 陶勇 | 16h |
| 51 | 3.6 | 发票信息管理 |  | 1d | 2012-08-21 | 2012-08-22 |  | 28d |  | start no earlier than 2012-08-21 | 向震 | 8h |
| 52 | 3.7 | 采购商功能完成 | milestone | 0d | 2012-08-01 | 2012-08-01 |  | 43d |  |  |  |  |
| 53 | 4 | **供应商功能模块** |  | 20.5d | 2012-08-01 | 2012-08-29 |  | 22.5d |  |  |  | 263h |
| 54 | 4.1 | 供应商首页 |  | 0.5d | 2012-08-22 | 2012-08-22 |  | 26.5d | 0d | start no earlier than 2012-08-22 | 向震 | 4h |
| 55 | 4.2 | 机票采购 |  | 0.5d | 2012-08-22 | 2012-08-23 | 54 | 26.5d | 0d |  | 向震 | 4h |
| 56 | 4.3 | 机票订单管理 |  | 0.5d | 2012-08-23 | 2012-08-23 | 55 | 26.5d |  |  | 向震 | 4h |

Notes:
- 55: 与采购商机票采购流程相同(要添加对应于供应商角色的权限)
- 56: 与采购商机票订单管理流程相同(要添加与供应商对应的角色权限)

| ID | WBS | Task | Duration | Start | Finish | Predecessors | Total slack | Free slack | Constraint | Resources | Work |
| --- | --- | --- | --- | --- | --- | --- | --- | --- | --- | --- | --- |
| 57 | 4.4 | **机票出票管理** | 19.38d | 2012-08-01 | 2012-08-28 |  | 23.62d |  |  |  | 155h |
| 58 | 4.4.1 | 机票出票订单列表 | 2.88d | 2012-08-01 | 2012-08-03 |  | 23.62d | 0d | finish no earlier than 2012-08-03 | 张明涛 | 23h |
| 59 | 4.4.2 | 处理已支付订单 | 2.88d | 2012-08-06 | 2012-08-08 | 58 | 23.62d | 0d | finish no earlier than 2012-08-03 | 张明涛 | 23h |
| 60 | 4.4.3 | 出票处理 | 2.88d | 2012-08-08 | 2012-08-13 | 59 | 23.62d | 0d | finish no earlier than 2012-08-03 | 张明涛 | 23h |
| 61 | 4.4.4 | 改签处理 | 2.88d | 2012-08-13 | 2012-08-16 | 60 | 23.62d | 0d | finish no earlier than 2012-08-03 | 张明涛 | 23h |
| 62 | 4.4.5 | 待审核订单列表 | 2.88d | 2012-08-16 | 2012-08-21 | 61 | 23.62d | 0d | finish no earlier than 2012-08-03 | 张明涛 | 23h |
| 63 | 4.4.6 | 预订审核 | 1d | 2012-08-21 | 2012-08-22 | 62 | 23.62d | 0d |  | 邓勇 | 8h |
| 64 | 4.4.7 | 改签审核 | 0.5d | 2012-08-22 | 2012-08-22 | 63 | 23.62d | 0d |  | 邓勇 | 4h |
| 65 | 4.4.8 | 退票审核 | 0.5d | 2012-08-23 | 2012-08-23 | 64 | 23.62d | 0d |  | 邓勇 | 4h |
| 66 | 4.4.9 | 退票订单列表 | 1d | 2012-08-23 | 2012-08-24 | 65 | 23.62d | 0d |  | 邓勇 | 8h |
| 67 | 4.4.10 | 退票处理 | 0.5d | 2012-08-24 | 2012-08-24 | 66 | 23.62d | 0d |  | 邓勇 | 4h |
| 68 | 4.4.11 | 废票订单列表 | 1d | 2012-08-27 | 2012-08-27 | 67 | 23.62d | 0d |  | 邓勇 | 8h |
| 69 | 4.4.12 | 废票处理 | 0.5d | 2012-08-28 | 2012-08-28 | 68 | 23.62d |  |  | 邓勇 | 4h |
| 70 | 4.5 | **国际政策** | 7d | 2012-08-01 | 2012-08-10 |  | 36d |  |  |  | 56h |
| 71 | 4.5.1 | 新增国际返点 | 2d | 2012-08-01 | 2012-08-03 |  | 36d | 0d | start no earlier than 2012-08-01 | 张明涛 | 16h |
| 72 | 4.5.2 | 批量设置授权号 | 0.5d | 2012-08-03 | 2012-08-03 | 71 | 36d | 0d |  | 张明涛 | 4h |
| 73 | 4.5.3 | 修改国际返点 | 1d | 2012-08-03 | 2012-08-06 | 72 | 36d | 0d |  | 张明涛 | 8h |
| 74 | 4.5.4 | 复制新增国际返点 | 0.5d | 2012-08-06 | 2012-08-07 | 73 | 36d | 0d |  | 张明涛 | 4h |
| 75 | 4.5.5 | 国际政策导入 | 2d | 2012-08-07 | 2012-08-09 | 74 | 36d | 0d |  | 张明涛 | 16h |
| 76 | 4.5.6 | 国际政策查询 | 1d | 2012-08-09 | 2012-08-10 | 75 | 36d |  |  | 张明涛 | 8h |
| 77 | 4.6 | **基础数据维护** | 1.5d | 2012-08-23 | 2012-08-24 |  | 25.5d |  |  |  | 12h |
| 78 | 4.6.1 | 工作时间维护 | 0.5d | 2012-08-23 | 2012-08-23 |  | 25.5d | 0d | start no earlier than 2012-08-23 | 向震 | 4h |
| 79 | 4.6.2 | 开票费设置 | 0.5d | 2012-08-23 | 2012-08-24 | 78 | 25.5d | 0d |  | 向震 | 4h |
| 80 | 4.6.3 | 废票费设置 | 0.5d | 2012-08-24 | 2012-08-24 | 79 | 25.5d |  |  | 向震 | 4h |

Notes:
- 76: 功能同采购商（要按照供应商角色分配权限）

| ID | WBS | Task | Type | Duration | Start | Finish | Predecessors | Total slack | Free slack | Constraint | Resources | Work |
| --- | --- | --- | --- | --- | --- | --- | --- | --- | --- | --- | --- | --- |
| 81 | 4.7 | **财务管理** |  | 3.5d | 2012-08-24 | 2012-08-29 |  | 22.5d |  |  |  | 28h |
| 82 | 4.7.1 | 退款订单管理 |  | 1d | 2012-08-24 | 2012-08-27 |  | 22.5d | 0d | start no earlier than 2012-08-24 | 张明涛 | 8h |
| 83 | 4.7.2 | 退款操作 |  | 0.5d | 2012-08-27 | 2012-08-27 | 82 | 22.5d | 0d |  | 张明涛 | 4h |
| 84 | 4.7.3 | 销售统计 |  | 2d | 2012-08-27 | 2012-08-29 | 83 | 22.5d | 0d |  | 张明涛 | 16h |
| 85 | 4.8 | 供应商功能模块完成 | milestone | 0d | 2012-08-29 | 2012-08-29 | 84 | 22.5d |  | start no earlier than 2012-07-30 |  |  |
| 86 | 5 | **运营商功能模块** |  | 8d | 2012-08-24 | 2012-09-05 |  | 18d |  |  |  | 80h |
| 87 | 5.1 | 首页 |  | 0.5d | 2012-08-24 | 2012-08-24 |  | 23.5d | 0d | start no earlier than 2012-08-24 | 向震 | 4h |
| 88 | 5.2 | 机票采购 |  | 0.5d | 2012-08-24 | 2012-08-27 | 87 | 23.5d | 0d |  | 向震 | 4h |
| 89 | 5.3 | 机票订单管理 |  | 0.5d | 2012-08-27 | 2012-08-27 | 88 | 23.5d | 0d |  | 向震 | 4h |
| 90 | 5.4 | 机票出票管理 |  | 0.5d | 2012-08-27 | 2012-08-28 | 89 | 23.5d | 0d |  | 向震 | 4h |
| 91 | 5.5 | 国际政策 |  | 0.5d | 2012-08-28 | 2012-08-28 | 90 | 23.5d |  |  | 向震 | 4h |
| 92 | 5.6 | **财务管理** |  | 2.5d | 2012-08-29 | 2012-08-31 |  | 20.5d |  |  |  | 20h |
| 93 | 5.6.1 | 退款订单管理 |  | 0.5d | 2012-08-29 | 2012-08-29 |  | 20.5d | 0d | start no earlier than 2012-08-29 | 张明涛 | 4h |
| 94 | 5.6.2 | 机票报表统计 |  | 2d | 2012-08-29 | 2012-08-31 | 93 | 20.5d |  |  | 张明涛 | 16h |
| 95 | 5.7 | **发票信息管理** |  | 4d | 2012-08-29 | 2012-09-04 |  | 18d |  |  |  | 32h |
| 96 | 5.7.1 | 发票信息管理列表 |  | 1d | 2012-08-29 | 2012-08-30 |  | 18d | 0d | start no earlier than 2012-08-29 | 向震 | 8h |
| 97 | 5.7.2 | 待开发票列表 |  | 0.5d | 2012-08-30 | 2012-08-30 | 96 | 18d | 0d |  | 向震 | 4h |
| 98 | 5.7.3 | 发票打印 |  | 1d | 2012-08-30 | 2012-08-31 | 97 | 18d | 0d |  | 向震 | 8h |
| 99 | 5.7.4 | 发票入库信息管理列表 |  | 0.5d | 2012-08-31 | 2012-09-03 | 98 | 18d | 0d |  | 向震 | 4h |
| 100 | 5.7.5 | 发票入库 |  | 0.5d | 2012-09-03 | 2012-09-03 | 99 | 18d | 0d |  | 向震 | 4h |
| 101 | 5.7.6 | 发票发放 |  | 0.5d | 2012-09-03 | 2012-09-04 | 100 | 18d | 0d |  | 向震 | 4h |
| 102 | 5.8 | 合作快递管理 |  | 0.5d | 2012-09-04 | 2012-09-04 | 101 | 18d | 0d |  | 向震 | 4h |
| 103 | 5.9 | 基础数据维护 |  | 0.5d | 2012-09-04 | 2012-09-05 | 102 | 18d | 0d |  | 向震 | 4h |
| 104 | 5.10 | 运营商功能模块完成 | milestone | 0d | 2012-09-05 | 2012-09-05 | 103 | 18d |  |  | 向震 |  |
| 105 | 6 | 集成支付流程 |  | 3d | 2012-09-03 | 2012-09-06 |  | 9d | 0d | start no earlier than 2012-09-03 | 陶勇 | 24h |
| 106 | 7 | 集成CRM |  | 3d | 2012-09-06 | 2012-09-11 | 105 | 9d | 0d |  | 陶勇 | 24h |
| 107 | 8 | 分配权限 |  | 2d | 2012-09-11 | 2012-09-13 | 106 | 9d | 0d |  | 陶勇 | 16h |
| 108 | 9 | 未知问题沟通解决 |  | 3d | 2012-09-13 | 2012-09-18 | 107 | 9d |  |  | 向震 | 24h |
| 109 | 10 | 单元测试 |  | 5d | 2012-09-17 | 2012-09-24 |  | 0d |  | start no earlier than 2012-09-17 | 向震 | 40h |
| 110 | 11 | 集成测试 |  | 5d | 2012-09-24 | 2012-10-01 | 109 | 0d |  |  | 张明涛 | 40h |

Notes:
- 88: 与采购商采购流程相同（注意角色权限分配）
- 89: 与采购商采购流程相同（注意角色权限分配）
- 90: 与供应商流程相同（注意角色权限分配）
- 91: 与供应商流程相同
- 93: 与供应商退款流程相同（注意权限分配）
- 103: 与供应商基础数据维护相同
